# projektplan_ipa

Schedule from MS Project, 2021-03-29 to 2021-04-14, A marks actual dates.

## Calendars

- Standard: Mon-Fri 08:00-12:00, 13:00-17:00; Sat-Sun off. Exceptions (off unless hours are given): 2021-04-02 to 2021-04-05 (Ostern), 2021-04-12 (Schule).

## Schedule

| ID | WBS | Task | Type | Duration | Start | Finish | Predecessors | Complete | Remaining | Baseline start | Baseline finish | Baseline duration | Total slack |
| --- | --- | --- | --- | --- | --- | --- | --- | --- | --- | --- | --- | --- | --- |
| 1 | 1 | **3D Web Anwendung des OSE Modells für die Produktion vorbereiten** |  | 10d | 2021-03-29 08:00 A | 2021-04-14 17:00 |  | 60% | 4d | 2021-03-29 08:00 | 2021-04-14 17:00 | 10d | 0d |
| 2 | 1.1 | **Initiale Dokumentation** |  | 0.62d | 2021-03-29 08:00 A | 2021-03-29 14:00 A |  | 100% |  | 2021-03-29 08:00 | 2021-03-29 14:00 | 0.62d |  |
| 3 | 1.1.1 | Projektplan erstellen |  | 2h | 2021-03-29 08:00 A | 2021-03-29 10:00 A |  | 100% |  | 2021-03-29 08:00 | 2021-03-29 10:00 | 2h |  |
| 4 | 1.1.2 | Aufgabenstellung übernehmen |  | 1h | 2021-03-29 10:00 A | 2021-03-29 11:00 A | 3 | 100% |  | 2021-03-29 10:00 | 2021-03-29 11:00 | 1h |  |
| 5 | 1.1.3 | Projektmanagementmethode beschreiben |  | 2h | 2021-03-29 11:00 A | 2021-03-29 14:00 A | 4 | 100% |  | 2021-03-29 11:00 | 2021-03-29 14:00 | 2h |  |
| 6 | 1.1.4 | Initiale Dokumentation erstellt | milestone | 0d | 2021-03-29 14:00 A | 2021-03-29 14:00 A | 5 | 100% |  | 2021-03-29 14:00 | 2021-03-29 14:00 | 0d |  |
| 7 | 1.2 | **Analyse** |  | 1.88d | 2021-03-29 14:00 A | 2021-03-31 12:00 A |  | 100% |  | 2021-03-29 14:00 | 2021-03-31 12:00 | 1.88d |  |
| 8 | 1.2.1 | Systembeschreibung |  | 2h | 2021-03-29 14:00 A | 2021-03-29 16:00 A | 6 | 100% |  | 2021-03-29 14:00 | 2021-03-29 16:00 | 2h |  |
| 9 | 1.2.2 | Soll/Ist-Vergleich |  | 1.5h | 2021-03-29 16:00 A | 2021-03-30 08:30 A | 8 | 100% |  | 2021-03-29 16:00 | 2021-03-30 09:00 | 2h |  |
| 10 | 1.2.3 | Namenskonzept |  | 0.5h | 2021-03-30 08:30 A | 2021-03-30 09:00 A | 9 | 100% |  |  |  |  |  |
| 11 | 1.2.4 | Versionsverwaltungskonzept |  | 1h | 2021-03-30 09:00 A | 2021-03-30 10:00 A | 10 | 100% |  | 2021-03-30 09:00 | 2021-03-30 10:00 | 1h |  |
| 12 | 1.2.5 | Backupkonzept |  | 1h | 2021-03-30 10:00 A | 2021-03-30 11:00 A | 11 | 100% |  | 2021-03-30 10:00 | 2021-03-30 11:00 | 1h |  |
| 13 | 1.2.6 | Personas beschreiben |  | 1h | 2021-03-30 11:00 A | 2021-03-30 12:00 A | 12 | 100% |  | 2021-03-30 11:00 | 2021-03-30 12:00 | 1h |  |
| 14 | 1.2.7 | User Stories erstellen |  | 2h | 2021-03-30 13:00 A | 2021-03-30 15:00 A | 13 | 100% |  | 2021-03-30 13:00 | 2021-03-30 15:00 | 2h |  |
| 15 | 1.2.8 | OAuth2 Strategie erarbeiten |  | 5h | 2021-03-30 15:00 A | 2021-03-31 11:00 A | 14 | 100% |  | 2021-03-30 15:00 | 2021-03-31 10:00 | 4h |  |
| 16 | 1.2.9 | OAuth2 Strategie mit Marco Roth oder Markus Strittmatter besprechen |  | 1h | 2021-03-31 11:00 A | 2021-03-31 12:00 A | 15 | 100% |  | 2021-03-31 10:00 | 2021-03-31 11:00 | 1h |  |
| 17 | 1.2.10 | Feedback zu OAuth2konzept übernehmen | milestone | 0h | 2021-03-31 12:00 A | 2021-03-31 12:00 A | 16 | 100% |  | 2021-03-31 11:00 | 2021-03-31 12:00 | 1h |  |
| 18 | 1.2.11 | Analyse abgeschlossen | milestone | 0d | 2021-03-31 12:00 A | 2021-03-31 12:00 A | 17 | 100% |  | 2021-03-31 12:00 | 2021-03-31 12:00 | 0d |  |
| 19 | 1.3 | **Entwurf** |  | 1.62d | 2021-03-31 13:00 A | 2021-04-06 09:00 A |  | 100% |  | 2021-03-31 13:00 | 2021-04-01 15:00 | 1.25d |  |
| 20 | 1.3.1 | Systementwurf / Softwareschnittstellen |  | 4h | 2021-03-31 13:00 A | 2021-03-31 17:00 A | 18 | 100% |  | 2021-03-31 13:00 | 2021-03-31 15:00 | 2h |  |
| 21 | 1.3.2 | Mockups erstellen |  | 3h | 2021-04-01 08:00 A | 2021-04-01 11:00 A | 20 | 100% |  | 2021-03-31 15:00 | 2021-03-31 17:00 | 2h |  |
| 22 | 1.3.3 | Mockups mit Auftraggeber besprechen |  | 1h | 2021-04-01 11:00 A | 2021-04-01 12:00 A | 21 | 100% |  | 2021-04-01 08:00 | 2021-04-01 09:00 | 1h |  |
| 23 | 1.3.4 | Feedback übernehmen |  | 1h | 2021-04-01 13:00 A | 2021-04-01 14:00 A | 22 | 100% |  | 2021-04-01 09:00 | 2021-04-01 10:00 | 1h |  |
| 24 | 1.3.5 | Testkonzept erarbeiten |  | 4h | 2021-04-01 14:00 A | 2021-04-06 09:00 A | 23 | 100% |  | 2021-04-01 10:00 | 2021-04-01 15:00 | 4h |  |
| 25 | 1.3.6 | Abschluss Entwurf | milestone | 0h | 2021-04-06 09:00 A | 2021-04-06 09:00 A | 24 | 100% |  | 2021-04-01 15:00 | 2021-04-01 15:00 | 0h |  |

| ID | WBS | Task | Type | Duration | Start | Finish | Predecessors | Complete | Remaining | Baseline start | Baseline finish | Baseline duration | Total slack | Soll |
| --- | --- | --- | --- | --- | --- | --- | --- | --- | --- | --- | --- | --- | --- | --- |
| 26 | 1.4 | **Implementierung** |  | 4d | 2021-04-06 09:00 A | 2021-04-13 09:00 |  | 47% | 2.12d | 2021-04-01 15:00 | 2021-04-09 15:00 | 4d | 0d | 54 |
| 27 | 1.4.1 | Startseite erstellen |  | 1h | 2021-04-06 09:00 A | 2021-04-06 10:00 A | 25 | 100% |  |  |  |  |  |  |
| 28 | 1.4.2 | User entität erstellen |  | 1h | 2021-04-06 10:00 A | 2021-04-06 11:00 A | 27 | 100% |  |  |  |  |  |  |
| 29 | 1.4.3 | OAuth2 Strategie implementieren im backend |  | 4h | 2021-04-06 11:00 A | 2021-04-06 16:00 A | 28 | 100% |  | 2021-04-01 15:00 | 2021-04-06 10:00 | 4h |  |  |
| 30 | 1.4.4 | OAuth2 Strategie implementieren im Frontend |  | 2h | 2021-04-06 16:00 A | 2021-04-07 09:00 A | 29 | 100% |  | 2021-04-06 10:00 | 2021-04-06 15:00 | 4h |  |  |
| 31 | 1.4.5 | Model entität erstellen und für REST anbieten |  | 4h | 2021-04-07 09:00 A | 2021-04-07 14:00 A | 30 | 100% |  | 2021-04-06 15:00 | 2021-04-07 10:00 | 4h |  |  |
| 32 | 1.4.6 | location entität erstellen und per rest anbieten |  | 4h | 2021-04-07 14:00 A | 2021-04-08 09:00 | 31, 33 | 75% | 1h | 2021-04-08 10:00 | 2021-04-08 15:00 | 4h | 0d |  |
| 33 | 1.4.7 | Automatisches verlinken |  | 4h | 2021-04-08 09:00 | 2021-04-08 14:00 | 32, 34 |  |  | 2021-04-07 15:00 | 2021-04-08 10:00 | 4h | 0d |  |
| 34 | 1.4.8 | Konfigurationsmenü erstellen |  | 4h | 2021-04-08 14:00 | 2021-04-09 09:00 | 33, 31 |  |  | 2021-04-07 10:00 | 2021-04-07 15:00 | 4h | 0d |  |
| 35 | 1.4.9 | Standortwahl&wechsel implementieren |  | 4h | 2021-04-09 09:00 | 2021-04-09 14:00 | 34, 32 |  |  | 2021-04-08 15:00 | 2021-04-09 10:00 | 4h | 0d |  |
| 36 | 1.4.10 | Dokumentation |  | 4h | 2021-04-09 14:00 | 2021-04-13 09:00 | 35 |  |  | 2021-04-09 10:00 | 2021-04-09 15:00 | 4h | 0d |  |
| 37 | 1.4.11 | Abschluss implementierung | milestone | 0d | 2021-04-13 09:00 | 2021-04-13 09:00 | 36 |  |  | 2021-04-09 15:00 | 2021-04-09 15:00 | 0d | 0d |  |
| 38 | 1.5 | **Testen** |  | 0.88d | 2021-04-13 09:00 | 2021-04-13 17:00 |  |  |  | 2021-04-09 15:00 | 2021-04-13 15:00 | 1d | 0d |  |
| 39 | 1.5.1 | Testcases abarbeiten |  | 3h | 2021-04-13 09:00 | 2021-04-13 12:00 | 37 |  |  | 2021-04-09 15:00 | 2021-04-13 10:00 | 4h | 0d |  |
| 40 | 1.5.2 | Dokumentation |  | 4h | 2021-04-13 13:00 | 2021-04-13 17:00 | 39 |  |  | 2021-04-13 10:00 | 2021-04-13 15:00 | 4h | 0d |  |
| 41 | 1.5.3 | Abschluss testen | milestone | 0d | 2021-04-13 17:00 | 2021-04-13 17:00 | 40 |  |  | 2021-04-13 15:00 | 2021-04-13 15:00 | 0d | 0d |  |
| 42 | 1.6 | **Abschluss** |  | 1d | 2021-04-14 08:00 | 2021-04-14 17:00 |  |  |  | 2021-04-13 15:00 | 2021-04-14 17:00 | 1.25d | 0d |  |
| 43 | 1.6.1 | Kurzfassung |  | 1h | 2021-04-14 08:00 | 2021-04-14 09:00 | 41 |  |  | 2021-04-13 15:00 | 2021-04-13 17:00 | 2h | 0d |  |
| 44 | 1.6.2 | Dokumentation überprüfen |  | 3h | 2021-04-14 09:00 | 2021-04-14 12:00 | 43 |  |  | 2021-04-14 08:00 | 2021-04-14 12:00 | 4h | 0d |  |
| 45 | 1.6.3 | Dokumentation anpassen |  | 4h | 2021-04-14 13:00 | 2021-04-14 17:00 | 44 |  |  | 2021-04-14 13:00 | 2021-04-14 17:00 | 4h | 0d |  |
| 46 | 1.7 | Abschluss IPA | milestone | 0d | 2021-04-14 17:00 | 2021-04-14 17:00 | 45 |  |  | 2021-04-14 17:00 | 2021-04-14 17:00 | 0d | 0d |  |
